# Children's book schedule

Schedule from MS Project, 2015-04-06 to 2015-11-13, costs in $.
Lucerne Publishing

## Calendars

- Standard: Mon-Fri 08:00-12:00, 13:00-17:00; Sat-Sun off.
- Monday-Wednesday: Mon-Wed 08:00-12:00, 13:00-17:00; Thu-Sun off.

## Resources

| Resource | Rate | Notes |
| --- | --- | --- |
| Carole Poland | 52.5 |  |
| Color Setting Services |  |  |
| Copyeditors | 45 |  |
| Dan Jump | 75.5 |  |
| Hany Morcos | 38.75 |  |
| Jane Dow | 55 |  |
| John Evans | 69.5 |  |
| Jun Cao | 42 |  |
| Katie Jordan | 48 |  |
| Luis Sousa | 70 |  |
| Printing Service |  |  |
| Robin Wood | 44 |  |
| Sharon Salavaria | 27.5 | Sharon's standard pay rate is adjusted for her half-time work schedule. |
| Tad Orman |  |  |
| Toby Nixon | 67.5 | Toby worked on launch campaigns for Toni Poe's previous two books. |
| Travel |  |  |
| Vikas Jain | 22 |  |
| William Flash |  |  |
| Zac Woodall | 55 |  |

## Schedule

| ID | WBS | Task | Type | Duration | Start | Finish | Predecessors | Baseline start | Baseline finish | Baseline duration | Total slack | Constraint | Resources | Work | Cost | Baseline cost |
| --- | --- | --- | --- | --- | --- | --- | --- | --- | --- | --- | --- | --- | --- | --- | --- | --- |
| 1 | 1 | **Acquisition** |  | 28d | 2015-04-06 | 2015-05-13 |  | 2015-04-06 | 2015-05-13 | 28d | 0d |  |  | 220h | 7,200 | 7,200 |
| 2 | 1.1 | Manuscript received | milestone | 0d | 2015-04-06 | 2015-04-06 |  | 2015-04-06 | 2015-04-06 | 0d | 0d |  |  |  |  |  |
| 3 | 1.2 | Content edit |  | 15d | 2015-04-06 | 2015-04-29 | 2 | 2015-04-06 | 2015-04-29 | 15d | 0d |  | Carole Poland | 120h | 6,300 | 6,300 |
| 4 | 1.3 | Author review of content edit |  | 10d | 2015-04-30 | 2015-05-13 | 3 | 2015-04-30 | 2015-05-13 | 10d | 0d |  | Tad Orman; Copyeditors [25%] | 100h | 900 | 900 |
| 5 | 1.4 | Handoff to Editorial | milestone | 0d | 2015-05-13 | 2015-05-13 | 4 | 2015-05-13 | 2015-05-13 | 0d | 0d |  | Carole Poland |  |  |  |
| 6 | 2 | **Editorial** |  | 37.5d | 2015-05-14 | 2015-07-06 | 1 | 2015-05-14 | 2015-07-06 | 37.5d | 0d |  |  | 420h | 14,800 | 14,800 |
| 7 | 2.1 | Organize manuscript for copyedit |  | 5d | 2015-05-14 | 2015-05-20 |  | 2015-05-14 | 2015-05-20 | 5d | 0d |  | Hany Morcos | 40h | 1,550 | 1,550 |
| 8 | 2.2 | Copyedit |  | 20d | 2015-05-21 | 2015-06-17 | 7 | 2015-05-21 | 2015-06-17 | 20d | 0d |  | Copyeditors [150%] | 240h | 10,800 | 10,800 |
| 9 | 2.3 | Author review of copyedit |  | 10d | 2015-06-18 | 2015-07-01 | 8 | 2015-06-18 | 2015-07-01 | 10d | 0d |  | Tad Orman; Copyeditors [25%] | 100h | 900 | 900 |
| 10 | 2.4 | Copyedit incorp |  | 5d | 2015-06-29 | 2015-07-06 | 9FS-2.5% | 2015-06-29 | 2015-07-06 | 5d | 0d |  | Hany Morcos | 40h | 1,550 | 1,550 |
| 11 | 2.5 | Handoff to Production | milestone | 0d | 2015-07-06 | 2015-07-06 | 10 | 2015-07-06 | 2015-07-06 | 0d | 0d |  | Hany Morcos |  |  |  |
| 12 | 3 | **Design and Production** |  | 50d | 2015-07-06 | 2015-09-14 | 6 | 2015-07-06 | 2015-09-14 | 50d | 0d |  |  | 676h | 32,650 | 32,650 |
| 13 | 3.1 | Set pages |  | 15d | 2015-07-06 | 2015-07-27 |  | 2015-07-06 | 2015-07-27 | 15d | 0d |  | Jane Dow | 120h | 6,600 | 6,600 |
| 14 | 3.2 | Interior illustration design |  | 15d | 2015-07-06 | 2015-07-27 | 13SS | 2015-07-06 | 2015-07-27 | 15d | 0d |  | Luis Sousa | 120h | 8,400 | 8,400 |
| 15 | 3.3 | **1st Pages review** |  | 25d | 2015-07-27 | 2015-08-31 | 14 | 2015-07-27 | 2015-08-31 | 25d | 0d |  |  | 220h | 7,450 | 7,450 |
| 16 | 3.3.1 | Proofread and index |  | 10d | 2015-07-27 | 2015-08-10 |  | 2015-07-27 | 2015-08-10 | 10d | 0d | start no earlier than 2015-07-17 | Tad Orman; Copyeditors | 100h | 900 | 900 |
| 17 | 3.3.2 | Incorporate 1st Pages review |  | 5d | 2015-08-10 | 2015-08-17 | 16 | 2015-08-10 | 2015-08-17 | 5d | 0d |  | Hany Morcos | 40h | 1,550 | 1,550 |
| 18 | 3.3.3 | Send proofed pages to Production | milestone | 0d | 2015-08-17 | 2015-08-17 | 17 | 2015-08-17 | 2015-08-17 | 0d | 0d |  | Hany Morcos |  |  |  |
| 19 | 3.3.4 | Enter page corrections and index |  | 5d | 2015-08-17 | 2015-08-24 | 18 | 2015-08-17 | 2015-08-24 | 5d | 0d |  | Jane Dow | 40h | 2,200 | 2,200 |
| 20 | 3.3.5 | Cover design |  | 5d | 2015-08-24 | 2015-08-31 | 19 | 2015-08-24 | 2015-08-31 | 5d | 0d |  | Luis Sousa | 40h | 2,800 | 2,800 |
| 21 | 3.4 | **2nd Pages review** |  | 10d | 2015-08-31 | 2015-09-14 |  | 2015-08-31 | 2015-09-14 | 10d | 0d |  |  | 160h | 7,400 | 7,400 |
| 22 | 3.4.1 | Proof and review |  | 5d | 2015-08-31 | 2015-09-07 | 20 | 2015-08-31 | 2015-09-07 | 5d | 0d |  | Hany Morcos | 40h | 1,550 | 1,550 |
| 23 | 3.4.2 | Send proofed pages to Production | milestone | 0d | 2015-09-07 | 2015-09-07 | 22 | 2015-09-07 | 2015-09-07 | 0d | 0d |  | Hany Morcos |  |  |  |
| 24 | 3.4.3 | Final review |  | 5d | 2015-09-07 | 2015-09-14 | 23 | 2015-09-07 | 2015-09-14 | 5d | 0d |  | Jane Dow; Hany Morcos; Carole Poland | 120h | 5,850 | 5,850 |

| ID | WBS | Task | Duration | Start | Finish | Predecessors | Baseline start | Baseline finish | Baseline duration | Total slack | Free slack | Calendar | Resources | Work | Cost | Baseline cost |
| --- | --- | --- | --- | --- | --- | --- | --- | --- | --- | --- | --- | --- | --- | --- | --- | --- |
| 25 | 3.5 | **Design book's companion website** | 5d | 2015-08-31 | 2015-09-07 |  | 2015-08-31 | 2015-09-07 | 5d | 5d |  |  |  | 56h | 2,800 | 2,800 |
| 26 | 3.5.1 | Create mockup | 3d | 2015-08-31 | 2015-09-03 | 20 | 2015-08-31 | 2015-09-03 | 3d | 5d | 0d |  | Luis Sousa | 24h | 1,680 | 1,680 |
| 27 | 3.5.2 | Review with author | 2d | 2015-09-03 | 2015-09-07 | 26 | 2015-09-03 | 2015-09-07 | 2d | 5d |  |  | Luis Sousa; Tad Orman | 32h | 1,120 | 1,120 |
| 28 | 4 | **Color prep and printing** | 44d | 2015-09-14 | 2015-11-13 |  | 2015-09-14 | 2015-11-13 | 44d | 0d |  |  |  | 328h | 310 | 310 |
| 29 | 4.1 | Send to color house | 1d | 2015-09-14 | 2015-09-15 | 24, 27 | 2015-09-14 | 2015-09-15 | 1d | 0d |  | Monday-Wednesday | Hany Morcos | 8h | 310 | 310 |
| 30 | 4.2 | Generate proofs | 10d | 2015-09-15 | 2015-09-29 | 29 | 2015-09-15 | 2015-09-29 | 10d | 0d |  |  | Color Setting Services | 80h |  |  |
| 31 | 4.3 | Print and ship | 30d | 2015-10-02 | 2015-11-13 | 30FS+3d | 2015-10-02 | 2015-11-13 | 30d | 0d |  |  | Printing Service | 240h |  |  |
